Schedule from MS Project, 2025-09-18 to 2025-12-12, costs in €, A marks actual dates.

## Calendars

- Estándar: Mon-Fri 09:00-13:00, 15:00-19:00; Sat-Sun off.

## Resources

| Resource | Rate |
| --- | --- |
| Equipo Director | 37 |
| Jefe Desarrollo | 35 |
| Desarrollo | 30 |
| Tester | 32 |
| Ordenador Portátil |  |
| Reservas de Contingencia |  |

## Schedule

| ID | WBS | Task | Type | Duration | Start | Finish | Predecessors | Remaining | Total slack | Free slack | Constraint | Resources | Work | Actual work | Cost | Actual cost |
| --- | --- | --- | --- | --- | --- | --- | --- | --- | --- | --- | --- | --- | --- | --- | --- | --- |
| 1 | 1 | **Proyecto** |  | 62d | 2025-09-18 A | 2025-12-12 |  | 62d | 0d |  |  | Reservas de Contingencia [0.1%] | 455.4h | 33h | 15,926.6 | 1,221 |
| 2 | 1.1 | **Plan de Dirección de Proyecto** |  | 27d | 2025-09-18 A | 2025-10-24 |  | 27d | 35d |  |  |  | 107.2h | 33h | 3,966.4 | 1,221 |
| 3 | 1.1.1 | A-001 Acta de Constitución |  | 2d | 2025-09-21 A | 2025-09-23 |  | 2d | 3d |  |  | Equipo Director [20%] | 3.2h |  | 118.4 |  |
| 4 | 1.1.2 | A-002 Registro de Supuestos |  | 2d | 2025-09-21 A | 2025-09-23 |  | 2d | 3d |  |  | Equipo Director [20%] | 3.2h |  | 118.4 |  |
| 5 | 1.1.3 | A-003 Registro de Interesados |  | 2d | 2025-09-21 A | 2025-09-23 |  | 2d | 3d |  |  | Equipo Director [20%] | 3.2h |  | 118.4 |  |
| 6 | 1.1.4 | A-004 Iniciar Plan de Dirección del Proyecto |  | 2d | 2025-09-28 A | 2025-09-30 | 3, 4, 5 | 2d | 51d | 16d |  | Equipo Director [20%] | 3.2h |  | 118.4 |  |
| 7 | 1.1.5 | A-005 Plan de Gestión de Comunicaciones |  | 2d | 2025-09-28 A | 2025-09-30 | 3, 4, 5 | 2d | 3d |  |  | Equipo Director [20%] | 3.2h |  | 118.4 |  |
| 8 | 1.1.6 | A-006 Registro de Requisitos |  | 2d | 2025-09-28 A | 2025-09-30 | 3, 4, 5 | 2d | 3d |  |  | Equipo Director [20%] | 3.2h | 3h | 118.4 | 111 |
| 9 | 1.1.7 | A-007 Matriz de Trazabilidad de Requisitos |  | 2d | 2025-09-28 A | 2025-09-30 | 3, 4, 5 | 2d | 3d |  |  | Equipo Director [20%] | 3.2h | 3h | 118.4 | 111 |
| 10 | 1.1.8 | A-008 Plan de Gestión del Alcance |  | 2d | 2025-10-05 A | 2025-10-07 | 7, 8, 9 | 2d | 3d |  |  | Equipo Director [20%] | 3.2h | 3h | 118.4 | 111 |
| 11 | 1.1.9 | A-009 Enunciado del Alcance |  | 2d | 2025-10-05 A | 2025-10-07 | 7, 8, 9 | 2d | 3d |  |  | Equipo Director [20%] | 3.2h | 3h | 118.4 | 111 |
| 12 | 1.1.10 | A-010 EDT |  | 2d | 2025-10-05 A | 2025-10-07 | 7, 8, 9 | 2d | 3d |  |  | Equipo Director [20%] | 3.2h | 3h | 118.4 | 111 |
| 13 | 1.1.11 | A-011 Diccionario de la EDT |  | 2d | 2025-10-05 A | 2025-10-07 | 7, 8, 9 | 2d | 3d |  |  | Equipo Director [20%] | 3.2h | 3h | 118.4 | 111 |
| 14 | 1.1.12 | A-012 Plan de Gestión del Cronograma |  | 2d | 2025-10-05 A | 2025-10-07 | 7, 8, 9 | 2d | 3d |  |  | Equipo Director [20%] | 3.2h | 3h | 118.4 | 111 |
| 15 | 1.1.13 | A-013 Lista de actividades |  | 2d | 2025-10-12 A | 2025-10-14 | 10, 11, 12, 13, 14 | 2d | 35d | 0d |  | Equipo Director [20%] | 3.2h | 3h | 118.4 | 111 |
| 16 | 1.1.14 | A-014 Atributos de actividad |  | 2d | 2025-10-12 A | 2025-10-14 | 10, 11, 12, 13, 14 | 2d | 35d | 0d |  | Equipo Director [20%] | 3.2h | 3h | 118.4 | 111 |
| 17 | 1.1.15 | A-015 Lista de Hitos |  | 2d | 2025-10-12 A | 2025-10-14 | 10, 11, 12, 13, 14 | 2d | 35d | 0d |  | Equipo Director [20%] | 3.2h | 3h | 118.4 | 111 |
| 18 | 1.1.16 | A-016 Cronograma (MS Project) |  | 2d | 2025-10-12 A | 2025-10-14 | 10, 11, 12, 13, 14 | 2d | 35d | 0d |  | Equipo Director [20%] | 3.2h | 3h | 118.4 | 111 |
| 19 | 1.1.17 | A-070 Plan de Gestión de la Calidad |  | 3d | 2025-10-15 | 2025-10-17 | 15, 16, 17, 18 |  | 35d | 0d |  | Equipo Director [20%] | 3.2h |  | 118.4 |  |
| 20 | 1.1.18 | A-071 Plan de Gestión de Riesgos |  | 3d | 2025-10-15 | 2025-10-17 | 15, 16, 17, 18 |  | 35d | 0d |  | Equipo Director [20%] | 3.2h |  | 118.4 |  |
| 21 | 1.1.19 | A-072 Registro de Riesgos | manual | 3d | 2025-10-15 | 2025-10-17 | 15, 16, 17, 18 |  |  |  |  | Equipo Director [20%] | 3.2h |  | 118.4 |  |
| 22 | 1.1.20 | A-073 Plan de Gestión de Recursos |  | 3d | 2025-10-15 | 2025-10-17 | 15, 16, 17, 18 |  | 35d | 0d |  | Equipo Director [20%] | 3.2h |  | 118.4 |  |
| 23 | 1.1.21 | A-074 Matriz de asignación de Responsabilidades |  | 3d | 2025-10-15 | 2025-10-17 | 15, 16, 17, 18 |  | 35d | 0d |  | Equipo Director [20%] | 3.2h |  | 118.4 |  |
| 24 | 1.1.22 | A-075 Cronograma: Recursos (MS project) |  | 3d | 2025-10-15 | 2025-10-17 | 15, 16, 17, 18 |  | 35d | 0d |  | Equipo Director [20%] | 3.2h |  | 118.4 |  |
| 25 | 1.1.23 | A-017 Plan de Gestión de Adquisiciones |  | 3d | 2025-10-20 | 2025-10-22 | 19, 20, 21, 22, 23, 24 |  | 35d | 0d |  | Equipo Director [20%] | 3.2h |  | 118.4 |  |
| 26 | 1.1.24 | A-018 Plan de Gestión de Costes |  | 3d | 2025-10-20 | 2025-10-22 | 19, 20, 21, 22, 23, 24 |  | 35d | 0d |  | Equipo Director [20%] | 3.2h |  | 118.4 |  |
| 27 | 1.1.25 | A-019 Presupuesto (MS Project) |  | 3d | 2025-10-20 | 2025-10-22 | 19, 20, 21, 22, 23, 24 |  | 35d | 0d |  | Equipo Director [20%] | 3.2h |  | 118.4 |  |
| 28 | 1.1.26 | A-020 Curva S de Costes (MS Project) |  | 3d | 2025-10-20 | 2025-10-22 | 19, 20, 21, 22, 23, 24 |  | 35d | 0d |  | Equipo Director [20%] | 3.2h |  | 118.4 |  |
| 29 | 1.1.27 | A-021 Plan de Gestión de Cambios |  | 3d | 2025-10-20 | 2025-10-22 | 19, 20, 21, 22, 23, 24 |  | 35d | 0d |  | Equipo Director [20%] | 3.2h |  | 118.4 |  |
| 30 | 1.1.28 | A-022 Plan de Gestión de la Configuración |  | 3d | 2025-10-20 | 2025-10-22 | 19, 20, 21, 22, 23, 24 |  | 35d | 0d |  | Equipo Director [20%] | 3.2h |  | 118.4 |  |
| 31 | 1.1.29 | A-023 Presentación plan de proyecto |  | 2d | 2025-10-23 | 2025-10-24 | 3, 4, 5, 6, 7, 8, 9, 10, 11, 12, 13, 14, 15, 16, 17, 18, 19, 20, 21, 22, 23, 24, 25, 26, 27, 28, 29, 30 |  | 35d |  |  | Equipo Director [20%] | 3.2h |  | 118.4 |  |
| 32 | 1.1.30 | A-024 Reunión de lanzamiento |  | 1d | 2025-10-23 | 2025-10-23 | 3, 4, 5, 6, 7, 8, 9, 10, 11, 12, 13, 14, 15, 16, 17, 18, 19, 20, 21, 22, 23, 24, 25, 26, 27, 28, 29, 30 |  | 36d |  | finish no earlier than 2025-10-23 | Equipo Director [60%] | 4.8h |  | 177.6 |  |
| 33 | 1.1.31 | A-076 Revisión del Plan de Proyecto |  | 2d | 2025-09-18 | 2025-09-19 |  |  | 60d |  |  | Equipo Director [60%] | 9.6h |  | 355.2 |  |

| ID | WBS | Task | Type | Duration | Start | Finish | Predecessors | Total slack | Free slack | Resources | Work | Cost |
| --- | --- | --- | --- | --- | --- | --- | --- | --- | --- | --- | --- | --- |
| 34 | 1.2 | **Formación** |  | 3d | 2025-11-02 | 2025-11-05 |  | 0d |  |  | 80h | 2,400 |
| 35 | 1.2.1 | A-025 Aprendizaje de Django | manual | 1d | 2025-11-02 | 2025-11-02 |  |  |  | Desarrollo [250%] | 20h | 600 |
| 36 | 1.2.2 | A-026 Aprendizaje de Render |  | 1d | 2025-11-03 | 2025-11-03 | 35 | 27d | 0d | Desarrollo [250%] | 20h | 600 |
| 37 | 1.2.3 | A-027 Aprendizaje de ZenHub |  | 1d | 2025-11-04 | 2025-11-04 | 36 | 27d | 0d | Desarrollo [250%] | 20h | 600 |
| 38 | 1.2.4 | A-028 Aprendizaje de Stripe |  | 1d | 2025-11-05 | 2025-11-05 | 37 | 27d |  | Desarrollo [250%] | 20h | 600 |
| 39 | 1.3 | **Diseño de Mockups** |  | 4d | 2025-11-01 | 2025-11-06 |  | 0d |  |  | 8.8h | 264 |
| 40 | 1.3.1 | A-029 Vista de registro de clientes y login | manual | 1d | 2025-11-01 | 2025-11-01 |  |  |  | Desarrollo [10%] | 0.8h | 24 |
| 41 | 1.3.2 | A-030 Vista de escaparate y catálogo de productos | manual | 1d | 2025-11-02 | 2025-11-02 | 40 |  |  | Desarrollo [10%] | 0.8h | 24 |
| 42 | 1.3.3 | A-031 Vista sobre carrito de la compra | manual | 1d | 2025-11-02 | 2025-11-02 | 41 |  |  | Desarrollo [10%] | 0.8h | 24 |
| 43 | 1.3.4 | A-032 Vista sobre datos del producto (Cliente y Administrador) | manual | 1d | 2025-11-03 | 2025-11-03 | 42 |  |  | Desarrollo [10%] | 0.8h | 24 |
| 44 | 1.3.5 | A-033 Vista sobre datos y formas de entrega | manual | 1d | 2025-11-04 | 2025-11-04 | 43 |  |  | Desarrollo [10%] | 0.8h | 24 |
| 45 | 1.3.6 | A-034 Vista de métodos de pago | manual | 1d | 2025-11-05 | 2025-11-05 | 44 |  |  | Desarrollo [10%] | 0.8h | 24 |
| 46 | 1.3.7 | A-035 Vista de ventas y clientes (Administrador) | manual | 1d | 2025-11-05 | 2025-11-05 | 44 |  |  | Desarrollo [10%] | 0.8h | 24 |
| 47 | 1.3.8 | A-036 Vista de estado del pedido | manual | 1d | 2025-11-05 | 2025-11-05 | 44 |  |  | Desarrollo [10%] | 0.8h | 24 |
| 48 | 1.3.9 | A-077 Revisión de la cobertura de todos los requisitos | manual | 1d | 2025-11-05 | 2025-11-05 |  |  |  | Desarrollo [10%] | 0.8h | 24 |
| 49 | 1.3.10 | A-082 Recogida de datos para identificar posibles mejoras en el diseño preliminar de la página web | manual | 2d | 2025-11-05 | 2025-11-06 |  |  |  | Desarrollo [10%] | 1.6h | 48 |
| 50 | 1.4 | **Configuración del Entorno de Desarrollo** |  | 2d | 2025-11-05 | 2025-11-06 |  |  |  |  | 6.2h | 186 |
| 51 | 1.4.1 | A-037 Instalación de tecnologías necesarias | manual | 1d | 2025-11-05 | 2025-11-05 |  |  |  | Desarrollo [250%] | 5h | 150 |
| 52 | 1.4.2 | A-038 Inicializar el proyecto con Django | manual | 2d | 2025-11-05 | 2025-11-06 | 51 |  |  | Desarrollo [5%] | 0.8h | 24 |
| 53 | 1.4.3 | A-039 Configuración de repositorio de GitHub | manual | 1d | 2025-11-06 | 2025-11-06 | 52 |  |  | Desarrollo [5%] | 0.4h | 12 |
| 54 | 1.5 | **Desarrollo del Backend y la Base de Datos** |  | 4d | 2025-11-06 | 2025-11-11 |  | 0d |  |  | 96h | 2,880 |
| 55 | 1.5.1 | A-040 Integración base de datos MariaDB en el sistema | manual | 1d | 2025-11-06 | 2025-11-06 |  |  |  | Desarrollo [10%] | 0.8h | 24 |
| 56 | 1.5.2 | A-041 Funcionalidades de acceso y cuentas | manual | 2d | 2025-11-07 | 2025-11-10 | 55 |  |  | Desarrollo | 16h | 480 |
| 57 | 1.5.3 | A-042 Funcionalidades del catálogo y buscador | manual | 2d | 2025-11-07 | 2025-11-10 | 55 |  |  | Desarrollo | 16h | 480 |
| 58 | 1.5.4 | A-043 Funcionalidades de carrito y proceso de compra | manual | 2d | 2025-11-07 | 2025-11-10 | 55 |  |  | Desarrollo | 16h | 480 |
| 59 | 1.5.5 | A-044 Funcionalidades de pedidos y seguimiento | manual | 2d | 2025-11-07 | 2025-11-10 | 55 |  |  | Desarrollo | 16h | 480 |
| 60 | 1.5.6 | A-045 Funcionalidades de administración | manual | 2d | 2025-11-07 | 2025-11-10 | 55 |  |  | Desarrollo | 16h | 480 |
| 61 | 1.5.7 | A-078 Revisión del código del Backend y la Base de Datos y pruebas unitarias de los mismos | manual | 3d | 2025-11-06 | 2025-11-10 |  |  |  | Desarrollo [50%] | 12h | 360 |
| 62 | 1.5.8 | A-083 Recogida de sugerencias para mejoras en la estructura de la base de datos | manual | 2d | 2025-11-10 | 2025-11-11 |  |  |  | Desarrollo [10%] | 1.6h | 48 |
| 63 | 1.5.9 | A-084 Recogida de sugerencias para refactorización y mejora de los elementos del backend | manual | 2d | 2025-11-10 | 2025-11-11 |  |  |  | Desarrollo [10%] | 1.6h | 48 |

| ID | WBS | Task | Type | Duration | Start | Finish | Total slack | Resources | Work | Cost |
| --- | --- | --- | --- | --- | --- | --- | --- | --- | --- | --- |
| 64 | 1.6 | **Desarrollo del Frontend** |  | 6d | 2025-11-10 | 2025-11-17 | 0d |  | 23.6h | 708 |
| 65 | 1.6.1 | A-046 Interfaces de acceso y cuentas | manual | 6d | 2025-11-10 | 2025-11-16 |  | Desarrollo | 4h | 120 |
| 66 | 1.6.2 | A-047 Interfaces del catálogo y buscador | manual | 6d | 2025-11-10 | 2025-11-16 |  | Desarrollo | 4h | 120 |
| 67 | 1.6.3 | A-048 Interfaces de carrito y proceso de compra | manual | 6d | 2025-11-10 | 2025-11-16 |  | Desarrollo | 4h | 120 |
| 68 | 1.6.4 | A-049 Interfaces de pedidos y seguimiento | manual | 6d | 2025-11-10 | 2025-11-16 |  | Desarrollo | 4h | 120 |
| 69 | 1.6.5 | A-050 Interfaces de funcionalidades de administración | manual | 6d | 2025-11-10 | 2025-11-16 |  | Desarrollo | 4h | 120 |
| 70 | 1.6.6 | A-079 Revisión del correcto funcionamiento del Frontend | manual | 6d | 2025-11-10 | 2025-11-16 |  | Desarrollo | 2h | 60 |
| 71 | 1.6.7 | A-085 Recogida de sugerencias y mejoras de los requisitos funcionales y no funcionales del frontend | manual | 2d | 2025-11-16 | 2025-11-17 |  | Desarrollo [10%] | 1.6h | 48 |
| 72 | 1.7 | **Seguimiento** |  | 22d | 2025-11-06 | 2025-12-05 | 0d |  | 70.4h | 2,112 |
| 73 | 1.7.1 | A-051 Registro de incidencias | manual | 22d | 2025-11-06 | 2025-12-05 |  | Desarrollo [5%] | 8.8h | 264 |
| 74 | 1.7.2 | A-052 Registro de decisiones | manual | 22d | 2025-11-06 | 2025-12-05 |  | Desarrollo [5%] | 8.8h | 264 |
| 75 | 1.7.3 | A-053 Registro de cambios | manual | 22d | 2025-11-06 | 2025-12-05 |  | Desarrollo [5%] | 8.8h | 264 |
| 76 | 1.7.4 | A-054 Informes de Seguimiento del Cronograma | manual | 22d | 2025-11-06 | 2025-12-05 |  | Desarrollo [5%] | 8.8h | 264 |
| 77 | 1.7.5 | A-055 Informes de Seguimiento de Costes | manual | 22d | 2025-11-06 | 2025-12-05 |  | Desarrollo [5%] | 8.8h | 264 |
| 78 | 1.7.6 | A-056 Informes de Desempeño del equipo de trabajo | manual | 22d | 2025-11-06 | 2025-12-05 |  | Desarrollo [5%] | 8.8h | 264 |
| 79 | 1.7.7 | A-057 Sprint backlog | manual | 22d | 2025-11-06 | 2025-12-05 |  | Desarrollo [5%] | 8.8h | 264 |
| 80 | 1.7.8 | A-058 Kanban de seguimiento | manual | 22d | 2025-11-06 | 2025-12-05 |  | Desarrollo [5%] | 8.8h | 264 |
| 81 | 1.8 | **Pruebas Funcionales** |  | 15d | 2025-11-17 | 2025-12-05 | 0d |  | 33.2h | 1,062.4 |
| 82 | 1.8.1 | A-059 Pruebas de acceso y cuentas | manual | 15d | 2025-11-17 | 2025-12-05 |  | Tester [5%] | 6h | 192 |
| 83 | 1.8.2 | A-060 Pruebas del catálogo y buscador | manual | 15d | 2025-11-17 | 2025-12-05 |  | Tester [5%] | 6h | 192 |
| 84 | 1.8.3 | A-061 Pruebas de carrito y proceso de compra | manual | 15d | 2025-11-17 | 2025-12-05 |  | Tester [5%] | 6h | 192 |
| 85 | 1.8.4 | A-062 Pruebas de pedidos y seguimiento | manual | 15d | 2025-11-17 | 2025-12-05 |  | Tester [5%] | 6h | 192 |
| 86 | 1.8.5 | A-063 Pruebas de funcionalidades de administración | manual | 15d | 2025-11-17 | 2025-12-05 |  | Tester [5%] | 6h | 192 |
| 87 | 1.8.6 | A-080 Cobertura de las pruebas | manual | 15d | 2025-11-17 | 2025-12-05 |  | Tester [1%] | 1.2h | 38.4 |
| 88 | 1.8.7 | A-086 Sugerencias de mejora y pruebas extra | manual | 5d | 2025-12-01 | 2025-12-05 |  | Tester [5%] | 2h | 64 |

| ID | WBS | Task | Type | Duration | Start | Finish | Total slack | Resources | Work | Cost |
| --- | --- | --- | --- | --- | --- | --- | --- | --- | --- | --- |
| 89 | 1.9 | **Corrección de errores** |  | 15d | 2025-11-17 | 2025-12-05 | 0d |  | 19.2h | 576 |
| 90 | 1.9.1 | A-064 Corrección técnica de errores | manual | 15d | 2025-11-17 | 2025-12-05 |  | Desarrollo [10%] | 12h | 360 |
| 91 | 1.9.2 | A-065 Pruebas de verificación de correcto funcionamiento | manual | 15d | 2025-11-17 | 2025-12-05 |  | Desarrollo [5%] | 6h | 180 |
| 92 | 1.9.3 | A-081 Cantidad de errores detectados | manual | 15d | 2025-11-17 | 2025-12-05 |  | Desarrollo [1%] | 1.2h | 36 |
| 93 | 1.10 | **Despliegue** |  | 15d | 2025-11-17 | 2025-12-05 | 0d |  | 2.8h | 84 |
| 94 | 1.10.1 | A-066 Configuración de la solución en el PaaS | manual | 15d | 2025-11-17 | 2025-12-05 |  | Desarrollo [2%] | 2.4h | 72 |
| 95 | 1.10.2 | A-067 Ejecución del despliegue | manual | 1d | 2025-12-05 | 2025-12-05 |  | Desarrollo [5%] | 0.4h | 12 |
| 96 | 1.11 | **Cierre del Proyecto** |  | 2d | 2025-12-11 | 2025-12-12 | 0d |  | 8h | 240 |
| 97 | 1.11.1 | A-068 Informe de cierre | manual | 2d | 2025-12-11 | 2025-12-12 |  | Desarrollo [25%] | 4h | 120 |
| 98 | 1.11.2 | A-069 Presentación | manual | 2d | 2025-12-11 | 2025-12-12 |  | Desarrollo [25%] | 4h | 120 |
