Schedule from MS Project, 2025-09-21 to 2025-12-11, status date 2025-11-23, costs in €, A marks actual dates.

## Calendars

- Estándar: Mon-Fri 09:00-13:00, 15:00-19:00; Sat-Sun off.

## Resources

| Resource | Group | Rate | Notes |
| --- | --- | --- | --- |
| Equipo Director | Planificación | 37 |  |
| Jefe Desarrollo | Desarrollo | 35 |  |
| Desarrollo | Desarrollo | 30 |  |
| Tester | Testing | 32 |  |
| Ordenador Portátil | Equipamiento | 1 |  |
| Reservas de Contingencia | Presupuesto |  |  |
| Licencia Windows 11 | Servicio | 1 | Servicio de pago único. |
| Infraestrucutra de alojamiento | Servicio | 1 | Servicio de pago único. |
| Servicio fotográfico artículos de prueba | Servicio | 1 | Servicio de pago único. |
| Reservas de Gestión | Presupuesto |  |  |

## Schedule

| ID | WBS | Task | Type | Duration | Start | Finish | Predecessors | Complete | Remaining | Baseline start | Baseline finish | Baseline duration | Total slack | Constraint | Resources | Work | Actual work | Cost | Baseline cost | Actual cost |
| --- | --- | --- | --- | --- | --- | --- | --- | --- | --- | --- | --- | --- | --- | --- | --- | --- | --- | --- | --- | --- |
| 1 | 1 | **Proyecto** |  | 58.3d | 2025-09-21 A | 2025-12-11 |  | 89% | 6.32d | 2025-09-21 | 2025-12-11 | 58.3d | 0d |  | Reservas de Contingencia [0.1%]; Reservas de Gestión [0.1%]; Ordenador Portátil [500%]; Licencia Windows 11 [500%]; Servicio fotográfico artículos de prueba; Infraestrucutra de alojamiento | 391.2h | 262.53h | 14,920.76 | 14,095.45 | 8,595.34 |
| 2 | 1.1 | **Plan de Dirección de Proyecto** |  | 30d | 2025-09-21 A | 2025-10-31 A |  | 100% |  | 2025-09-21 | 2025-10-31 | 30d |  |  |  | 86.8h | 86.8h | 3,211.6 | 3,211.6 | 3,211.6 |
| 3 | 1.1.1 | A-001 Acta de Constitución |  | 2.16d | 2025-09-21 A | 2025-09-24 A |  | 100% |  | 2025-09-21 | 2025-09-24 | 2.16d |  |  | Equipo Director [50%] | 2.5h | 2.5h | 92.5 | 92.5 | 92.5 |
| 4 | 1.1.2 | A-002 Registro de Supuestos |  | 2.16d | 2025-09-21 A | 2025-09-24 A |  | 100% |  | 2025-09-21 | 2025-09-24 | 2.16d |  |  | Equipo Director [50%] | 2.5h | 2.5h | 92.5 | 92.5 | 92.5 |
| 5 | 1.1.3 | A-003 Registro de Interesados |  | 2.16d | 2025-09-21 A | 2025-09-24 A |  | 100% |  | 2025-09-21 | 2025-09-24 | 2.16d |  |  | Equipo Director [50%] | 2.5h | 2.5h | 92.5 | 92.5 | 92.5 |
| 6 | 1.1.4 | A-004 Iniciar Plan de Dirección del Proyecto |  | 2.16d | 2025-09-28 A | 2025-10-01 A | 3, 4, 5 | 100% |  | 2025-09-28 | 2025-10-01 | 2.16d |  |  | Equipo Director [50%] | 2.5h | 2.5h | 92.5 | 92.5 | 92.5 |
| 7 | 1.1.5 | A-005 Plan de Gestión de Comunicaciones |  | 2.16d | 2025-09-28 A | 2025-10-01 A | 3, 4, 5 | 100% |  | 2025-09-28 | 2025-10-01 | 2.16d |  |  | Equipo Director [50%] | 2.5h | 2.5h | 92.5 | 92.5 | 92.5 |
| 8 | 1.1.6 | A-006 Registro de Requisitos |  | 2.16d | 2025-09-28 A | 2025-10-01 A | 3, 4, 5 | 100% |  | 2025-09-28 | 2025-10-01 | 2.16d |  |  | Equipo Director [50%] | 2.5h | 2.5h | 92.5 | 92.5 | 92.5 |
| 9 | 1.1.7 | A-007 Matriz de Trazabilidad de Requisitos |  | 2.16d | 2025-09-28 A | 2025-10-01 A | 3, 4, 5 | 100% |  | 2025-09-28 | 2025-10-01 | 2.16d |  |  | Equipo Director [50%] | 2.5h | 2.5h | 92.5 | 92.5 | 92.5 |
| 10 | 1.1.8 | A-008 Plan de Gestión del Alcance |  | 2.16d | 2025-10-05 A | 2025-10-08 A | 7, 8, 9 | 100% |  | 2025-10-05 | 2025-10-08 | 2.16d |  |  | Equipo Director [50%] | 2.5h | 2.5h | 92.5 | 92.5 | 92.5 |
| 11 | 1.1.9 | A-009 Enunciado del Alcance |  | 2.16d | 2025-10-05 A | 2025-10-08 A | 7, 8, 9 | 100% |  | 2025-10-05 | 2025-10-08 | 2.16d |  |  | Equipo Director [50%] | 2.5h | 2.5h | 92.5 | 92.5 | 92.5 |
| 12 | 1.1.10 | A-010 EDT |  | 2.16d | 2025-10-05 A | 2025-10-08 A | 7, 8, 9 | 100% |  | 2025-10-05 | 2025-10-08 | 2.16d |  |  | Equipo Director [50%] | 2.5h | 2.5h | 92.5 | 92.5 | 92.5 |
| 13 | 1.1.11 | A-011 Diccionario de la EDT |  | 2.16d | 2025-10-05 A | 2025-10-08 A | 7, 8, 9 | 100% |  | 2025-10-05 | 2025-10-08 | 2.16d |  |  | Equipo Director [50%] | 2.5h | 2.5h | 92.5 | 92.5 | 92.5 |
| 14 | 1.1.12 | A-012 Plan de Gestión del Cronograma |  | 2.16d | 2025-10-05 A | 2025-10-08 A | 7, 8, 9 | 100% |  | 2025-10-05 | 2025-10-08 | 2.16d |  |  | Equipo Director [50%] | 2.5h | 2.5h | 92.5 | 92.5 | 92.5 |
| 15 | 1.1.13 | A-013 Lista de actividades |  | 2.16d | 2025-10-12 A | 2025-10-15 A | 10, 11, 12, 13, 14 | 100% |  | 2025-10-12 | 2025-10-15 | 2.16d |  |  | Equipo Director [50%] | 2.5h | 2.5h | 92.5 | 92.5 | 92.5 |
| 16 | 1.1.14 | A-014 Atributos de actividad |  | 2.16d | 2025-10-12 A | 2025-10-15 A | 10, 11, 12, 13, 14 | 100% |  | 2025-10-12 | 2025-10-15 | 2.16d |  |  | Equipo Director [50%] | 2.5h | 2.5h | 92.5 | 92.5 | 92.5 |
| 17 | 1.1.15 | A-015 Lista de Hitos |  | 2.16d | 2025-10-12 A | 2025-10-15 A | 10, 11, 12, 13, 14 | 100% |  | 2025-10-12 | 2025-10-15 | 2.16d |  |  | Equipo Director [50%] | 2.5h | 2.5h | 92.5 | 92.5 | 92.5 |
| 18 | 1.1.16 | A-016 Cronograma (MS Project) |  | 2.16d | 2025-10-12 A | 2025-10-15 A | 10, 11, 12, 13, 14 | 100% |  | 2025-10-12 | 2025-10-15 | 2.16d |  |  | Equipo Director [50%] | 2.5h | 2.5h | 92.5 | 92.5 | 92.5 |
| 19 | 1.1.17 | A-070 Plan de Gestión de la Calidad |  | 2.16d | 2025-10-15 A | 2025-10-17 A | 15, 16, 17, 18 | 100% |  | 2025-10-15 | 2025-10-17 | 2.16d |  |  | Equipo Director [50%] | 2.5h | 2.5h | 92.5 | 92.5 | 92.5 |
| 20 | 1.1.18 | A-071 Plan de Gestión de Riesgos |  | 2.16d | 2025-10-15 A | 2025-10-17 A | 15, 16, 17, 18 | 100% |  | 2025-10-15 | 2025-10-17 | 2.16d |  |  | Equipo Director [50%] | 2.5h | 2.5h | 92.5 | 92.5 | 92.5 |
| 21 | 1.1.19 | A-072 Registro de Riesgos | manual | 1.28d | 2025-10-15 A | 2025-10-16 A | 15, 16, 17, 18 | 100% |  | 2025-10-15 | 2025-10-16 | 1.28d |  |  | Equipo Director [50%] | 2.5h | 2.5h | 92.5 | 92.5 | 92.5 |
| 22 | 1.1.20 | A-073 Plan de Gestión de Recursos |  | 2.16d | 2025-10-15 A | 2025-10-17 A | 15, 16, 17, 18 | 100% |  | 2025-10-15 | 2025-10-17 | 2.16d |  |  | Equipo Director [50%] | 2.5h | 2.5h | 92.5 | 92.5 | 92.5 |
| 23 | 1.1.21 | A-074 Matriz de asignación de Responsabilidades |  | 2.16d | 2025-10-15 A | 2025-10-17 A | 15, 16, 17, 18 | 100% |  | 2025-10-15 | 2025-10-17 | 2.16d |  |  | Equipo Director [50%] | 2.5h | 2.5h | 92.5 | 92.5 | 92.5 |
| 24 | 1.1.22 | A-075 Cronograma: Recursos (MS project) |  | 2.16d | 2025-10-15 A | 2025-10-17 A | 15, 16, 17, 18 | 100% |  | 2025-10-15 | 2025-10-17 | 2.16d |  |  | Equipo Director [50%] | 2.5h | 2.5h | 92.5 | 92.5 | 92.5 |
| 25 | 1.1.23 | A-017 Plan de Gestión de Adquisiciones |  | 2.16d | 2025-10-17 A | 2025-10-21 A | 19, 20, 21, 22, 23, 24 | 100% |  | 2025-10-17 | 2025-10-21 | 2.16d |  | finish no earlier than 2025-10-20 | Equipo Director [50%] | 2.5h | 2.5h | 92.5 | 92.5 | 92.5 |
| 26 | 1.1.24 | A-018 Plan de Gestión de Costes |  | 2.16d | 2025-10-17 A | 2025-10-21 A | 19, 20, 21, 22, 23, 24 | 100% |  | 2025-10-17 | 2025-10-21 | 2.16d |  |  | Equipo Director [50%] | 2.5h | 2.5h | 92.5 | 92.5 | 92.5 |
| 27 | 1.1.25 | A-019 Presupuesto (MS Project) |  | 2.16d | 2025-10-17 A | 2025-10-21 A | 19, 20, 21, 22, 23, 24 | 100% |  | 2025-10-17 | 2025-10-21 | 2.16d |  |  | Equipo Director [50%] | 2.5h | 2.5h | 92.5 | 92.5 | 92.5 |
| 28 | 1.1.26 | A-020 Curva S de Costes (MS Project) |  | 2.16d | 2025-10-17 A | 2025-10-21 A | 19, 20, 21, 22, 23, 24 | 100% |  | 2025-10-17 | 2025-10-21 | 2.16d |  |  | Equipo Director [50%] | 2.5h | 2.5h | 92.5 | 92.5 | 92.5 |
| 29 | 1.1.27 | A-021 Plan de Gestión de Cambios |  | 2.16d | 2025-10-17 A | 2025-10-21 A | 19, 20, 21, 22, 23, 24 | 100% |  | 2025-10-17 | 2025-10-21 | 2.16d |  |  | Equipo Director [50%] | 2.5h | 2.5h | 92.5 | 92.5 | 92.5 |
| 30 | 1.1.28 | A-022 Plan de Gestión de la Configuración |  | 2.16d | 2025-10-17 A | 2025-10-21 A | 19, 20, 21, 22, 23, 24 | 100% |  | 2025-10-17 | 2025-10-21 | 2.16d |  |  | Equipo Director [50%] | 2.5h | 2.5h | 92.5 | 92.5 | 92.5 |
| 31 | 1.1.29 | A-023 Presentación plan de proyecto |  | 2d | 2025-10-21 A | 2025-10-23 A | 3, 4, 5, 6, 7, 8, 9, 10, 11, 12, 13, 14, 15, 16, 17, 18, 19, 20, 21, 22, 23, 24, 25, 26, 27, 28, 29, 30 | 100% |  | 2025-10-21 | 2025-10-23 | 2d |  |  | Equipo Director [250%] | 2.5h | 2.5h | 92.5 | 92.5 | 92.5 |
| 32 | 1.1.30 | A-024 Reunión de lanzamiento |  | 1d | 2025-10-30 A | 2025-10-30 A | 3, 4, 5, 6, 7, 8, 9, 10, 11, 12, 13, 14, 15, 16, 17, 18, 19, 20, 21, 22, 23, 24, 25, 26, 27, 28, 29, 30 | 100% |  | 2025-10-30 | 2025-10-30 | 1d |  | start no earlier than 2025-10-30 | Equipo Director [250%] | 3.5h | 3.5h | 129.5 | 129.5 | 129.5 |
| 33 | 1.1.31 | A-076 Revisión del Plan de Proyecto |  | 2.16d | 2025-10-29 A | 2025-10-31 A |  | 100% |  | 2025-10-29 | 2025-10-31 | 2.16d |  | finish no earlier than 2025-10-31 | Equipo Director [250%] | 10.8h | 10.8h | 399.6 | 399.6 | 399.6 |

| ID | WBS | Task | Type | Duration | Start | Finish | Predecessors | Complete | Actual start | Actual finish | Baseline start | Baseline finish | Baseline duration | Constraint | Resources | Work | Actual work | Cost | Baseline cost | Actual cost |
| --- | --- | --- | --- | --- | --- | --- | --- | --- | --- | --- | --- | --- | --- | --- | --- | --- | --- | --- | --- | --- |
| 34 | 1.2 | **Formación** |  | 3d | 2025-11-02 A | 2025-11-05 A |  | 100% |  |  | 2025-11-02 | 2025-11-05 | 3d |  |  | 40.9h | 40.9h | 1,251.47 | 1,596.44 | 1,251.47 |
| 35 | 1.2.1 | A-025 Aprendizaje de Django | manual | 1d | 2025-11-02 A | 2025-11-02 A |  | 100% |  |  | 2025-11-02 | 2025-11-02 | 1d |  | Desarrollo [250%]; Tester [250%] | 20h | 20h | 624.44 | 624.44 | 624.44 |
| 36 | 1.2.2 | A-026 Aprendizaje de Render | manual | 1d | 2025-11-03 A | 2025-11-03 A | 35 | 100% |  |  | 2025-11-02 | 2025-11-03 | 1d |  | Desarrollo [50%]; Tester [50%] | 5h | 5h | 150 | 324 | 150 |
| 37 | 1.2.3 | A-027 Aprendizaje de ZenHub | manual | 0.47d | 2025-11-04 A | 2025-11-04 A | 36 | 100% |  |  | 2025-11-04 | 2025-11-04 | 1d | start no earlier than 2025-11-04 | Desarrollo [15%]; Tester [15%] | 5.1h | 5.1h | 153.02 | 324 | 153.02 |
| 38 | 1.2.4 | A-028 Aprendizaje de Stripe |  | 1d | 2025-11-05 A | 2025-11-05 A | 37 | 100% |  |  | 2025-11-05 | 2025-11-05 | 1d | start no earlier than 2025-11-05 | Desarrollo [10%]; Tester [10%] | 10.8h | 10.8h | 324 | 324 | 324 |
| 39 | 1.3 | **Diseño de Mockups** |  | 4d | 2025-11-01 A | 2025-11-06 A |  | 100% |  |  | 2025-11-01 | 2025-11-06 | 4d |  |  | 8.95h | 8.95h | 268.59 | 340.5 | 268.59 |
| 40 | 1.3.1 | A-029 Vista de registro de clientes y login | manual | 1.16d | 2025-11-01 A | 2025-11-02 A |  | 100% |  |  | 2025-11-01 | 2025-11-02 | 1.16d |  | Desarrollo [5%] | 0.56h | 0.56h | 16.92 | 30 | 16.92 |
| 41 | 1.3.2 | A-030 Vista de escaparate y catálogo de productos | manual | 1.16d | 2025-11-01 A | 2025-11-02 A | 40 | 100% |  |  | 2025-11-01 | 2025-11-02 | 1.16d |  | Desarrollo [5%] | 0.56h | 0.56h | 16.92 | 30 | 16.92 |
| 42 | 1.3.3 | A-031 Vista sobre carrito de la compra | manual | 1.16d | 2025-11-02 A | 2025-11-03 A | 41 | 100% |  |  | 2025-11-02 | 2025-11-03 | 1.16d |  | Desarrollo [5%] | 0.56h | 0.56h | 16.92 | 30 | 16.92 |
| 43 | 1.3.4 | A-032 Vista sobre datos del producto (Cliente y Administrador) | manual | 1.16d | 2025-11-02 A | 2025-11-03 A | 42 | 100% |  |  | 2025-11-02 | 2025-11-03 | 1.16d |  | Desarrollo [5%] | 0.56h | 0.56h | 16.92 | 30 | 16.92 |
| 44 | 1.3.5 | A-033 Vista sobre datos y formas de entrega | manual | 1.16d | 2025-11-03 A | 2025-11-04 A | 43 | 100% |  |  | 2025-11-03 | 2025-11-04 | 1.16d |  | Desarrollo [5%] | 0.56h | 0.56h | 16.92 | 30 | 16.92 |
| 45 | 1.3.6 | A-034 Vista de métodos de pago | manual | 1.16d | 2025-11-03 A | 2025-11-04 A | 44 | 100% |  |  | 2025-11-03 | 2025-11-04 | 1.16d |  | Desarrollo [5%] | 1.26h | 1.26h | 37.92 | 30 | 37.92 |
| 46 | 1.3.7 | A-035 Vista de ventas y clientes (Administrador) | manual | 1.16d | 2025-11-04 A | 2025-11-05 A | 44 | 100% |  |  | 2025-11-04 | 2025-11-05 | 1.16d |  | Desarrollo [5%] | 0.56h | 0.56h | 16.92 | 30 | 16.92 |
| 47 | 1.3.8 | A-036 Vista de estado del pedido | manual | 1.16d | 2025-11-04 A | 2025-11-05 A | 44 | 100% |  |  | 2025-11-04 | 2025-11-05 | 1.16d |  | Desarrollo [5%] | 0.56h | 0.56h | 16.92 | 30 | 16.92 |
| 48 | 1.3.9 | A-077 Revisión de la cobertura de todos los requisitos | manual | 1.16d | 2025-11-05 A | 2025-11-06 A |  | 100% |  |  | 2025-11-05 | 2025-11-06 | 1.16d |  | Desarrollo [10%] | 1.73h | 1.73h | 51.75 | 37.5 | 51.75 |
| 49 | 1.3.10 | A-082 Recogida de datos para identificar posibles mejoras en el diseño preliminar de la página web | manual | 2d | 2025-11-05 A | 2025-11-06 A |  | 100% |  |  | 2025-11-05 | 2025-11-06 | 2d |  | Desarrollo [10%] | 2.02h | 2.02h | 60.48 | 63 | 60.48 |
| 50 | 1.4 | **Configuración del Entorno de Desarrollo** |  | 2d | 2025-11-05 | 2025-11-06 |  | 100% | 2025-11-07 | 2025-11-08 | 2025-11-05 | 2025-11-06 | 2d |  |  | 3.5h | 3.5h | 107.97 | 231.01 | 107.97 |
| 51 | 1.4.1 | A-037 Instalación de tecnologías necesarias | manual | 0.95d | 2025-11-07 A | 2025-11-07 A |  | 100% |  |  | 2025-11-05 | 2025-11-06 | 1.16d |  | Desarrollo [10%]; Tester [10%] | 2h | 2h | 61.97 | 167.61 | 61.97 |
| 52 | 1.4.2 | A-038 Inicializar el proyecto con Django | manual | 1d | 2025-11-08 A | 2025-11-08 A | 51 | 100% |  |  | 2025-11-05 | 2025-11-06 | 2d |  | Desarrollo [5%]; Tester [5%] | 1h | 1h | 31 | 54.4 | 31 |
| 53 | 1.4.3 | A-039 Configuración de repositorio de GitHub | manual | 1d | 2025-11-08 A | 2025-11-08 A | 52 | 100% |  |  | 2025-11-05 | 2025-11-06 | 1.16d |  | Desarrollo [5%] | 0.5h | 0.5h | 15 | 9 | 15 |
| 54 | 1.5 | **Desarrollo del Backend y la Base de Datos** |  | 12d | 2025-11-06 A | 2025-11-23 A |  | 100% |  |  | 2025-11-06 | 2025-11-10 | 3d |  |  | 33.55h | 33.55h | 1,027.15 | 1,794.29 | 1,027.15 |
| 55 | 1.5.1 | A-040 Integración base de datos MariaDB en el sistema | manual | 1.16d | 2025-11-06 A | 2025-11-07 A |  | 100% |  |  | 2025-11-06 | 2025-11-07 | 1.16d |  | Desarrollo [50%]; Tester [50%] | 1.25h | 1.25h | 38.79 | 38.79 | 38.79 |
| 56 | 1.5.2 | A-041 Funcionalidades de acceso y cuentas | manual | 3.04d | 2025-11-11 A | 2025-11-14 A | 55 | 100% |  |  | 2025-11-06 | 2025-11-09 | 2.3d |  | Desarrollo [2%]; Tester [2%] | 4.24h | 4.24h | 131.44 | 263.5 | 131.44 |
| 57 | 1.5.3 | A-042 Funcionalidades del catálogo y buscador | manual | 3d | 2025-11-11 A | 2025-11-13 A | 55 | 100% |  |  | 2025-11-06 | 2025-11-09 | 2.3d |  | Desarrollo [4%]; Tester [4%] | 4.64h | 4.64h | 143.84 | 263.5 | 143.84 |
| 58 | 1.5.4 | A-043 Funcionalidades de carrito y proceso de compra | manual | 5d | 2025-11-15 A | 2025-11-20 A | 55 | 100% |  |  | 2025-11-06 | 2025-11-09 | 2.3d |  | Desarrollo [1%]; Tester [1%] | 5.79h | 5.79h | 179.54 | 263.5 | 179.54 |
| 59 | 1.5.5 | A-044 Funcionalidades de pedidos y seguimiento | manual | 2d | 2025-11-14 A | 2025-11-15 A | 55 | 100% |  |  | 2025-11-06 | 2025-11-09 | 2.3d |  | Desarrollo [50%]; Tester [50%] | 3.16h | 3.16h | 97.84 | 263.5 | 97.84 |
| 60 | 1.5.6 | A-045 Funcionalidades de administración | manual | 5d | 2025-11-18 A | 2025-11-22 A | 55 | 100% |  |  | 2025-11-06 | 2025-11-09 | 2.3d |  | Desarrollo [5%]; Tester [2%] | 6.12h | 6.12h | 185.24 | 263.5 | 185.24 |
| 61 | 1.5.7 | A-078 Revisión del código del Backend y la Base de Datos y pruebas unitarias de los mismos | manual | 2d | 2025-11-21 A | 2025-11-23 A |  | 100% |  |  | 2025-11-09 | 2025-11-10 | 2d |  | Desarrollo [5%] | 4.35h | 4.35h | 130.46 | 312 | 130.46 |
| 62 | 1.5.8 | A-083 Recogida de sugerencias para mejoras en la estructura de la base de datos | manual | 0.12d | 2025-11-23 A | 2025-11-23 A |  | 100% |  |  | 2025-11-09 | 2025-11-10 | 2d |  | Desarrollo [25%] | 2.5h | 2.5h | 75 | 63 | 75 |
| 63 | 1.5.9 | A-084 Recogida de sugerencias para refactorización y mejora de los elementos del backend | manual | 0.5d | 2025-11-23 A | 2025-11-23 A |  | 100% |  |  | 2025-11-09 | 2025-11-10 | 2d |  | Desarrollo [15%] | 1.5h | 1.5h | 45 | 63 | 45 |

| ID | WBS | Task | Type | Duration | Start | Finish | Complete | Remaining | Baseline start | Baseline finish | Baseline duration | Total slack | Resources | Work | Actual work | Cost | Baseline cost | Actual cost |
| --- | --- | --- | --- | --- | --- | --- | --- | --- | --- | --- | --- | --- | --- | --- | --- | --- | --- | --- |
| 64 | 1.6 | **Desarrollo del Frontend** |  | 8d | 2025-11-12 A | 2025-11-23 A | 100% |  | 2025-11-11 | 2025-11-17 | 5d |  |  | 18.52h | 18.52h | 555.5 | 1,197.3 | 555.5 |
| 65 | 1.6.1 | A-046 Interfaces de acceso y cuentas | manual | 3d | 2025-11-12 A | 2025-11-14 A | 100% |  | 2025-11-11 | 2025-11-13 | 2.16d |  | Desarrollo [10%] | 5.8h | 5.8h | 174 | 189 | 174 |
| 66 | 1.6.2 | A-047 Interfaces del catálogo y buscador | manual | 2d | 2025-11-12 A | 2025-11-13 A | 100% |  | 2025-11-11 | 2025-11-13 | 2.16d |  | Desarrollo | 3.79h | 3.79h | 113.6 | 189 | 113.6 |
| 67 | 1.6.3 | A-048 Interfaces de carrito y proceso de compra | manual | 5d | 2025-11-15 A | 2025-11-20 A | 100% |  | 2025-11-13 | 2025-11-15 | 2.16d |  | Desarrollo [1%] | 2.07h | 2.07h | 62.05 | 189 | 62.05 |
| 68 | 1.6.4 | A-049 Interfaces de pedidos y seguimiento | manual | 1.63d | 2025-11-15 A | 2025-11-16 A | 100% |  | 2025-11-13 | 2025-11-15 | 2.16d |  | Desarrollo [7%] | 2.38h | 2.38h | 71.4 | 189 | 71.4 |
| 69 | 1.6.5 | A-050 Interfaces de funcionalidades de administración | manual | 5d | 2025-11-18 A | 2025-11-22 A | 100% |  | 2025-11-13 | 2025-11-15 | 2.16d |  | Desarrollo [3%] | 3.23h | 3.23h | 96.85 | 189 | 96.85 |
| 70 | 1.6.6 | A-079 Revisión del correcto funcionamiento del Frontend | manual | 2d | 2025-11-22 A | 2025-11-23 A | 100% |  | 2025-11-15 | 2025-11-16 | 2d |  | Desarrollo [2%] | 0.85h | 0.85h | 25.6 | 187.5 | 25.6 |
| 71 | 1.6.7 | A-085 Recogida de sugerencias y mejoras de los requisitos funcionales y no funcionales del frontend | manual | 1d | 2025-11-23 A | 2025-11-23 A | 100% |  | 2025-11-16 | 2025-11-17 | 2d |  | Desarrollo [4%] | 0.4h | 0.4h | 12 | 64.8 | 12 |
| 72 | 1.7 | **Seguimiento** |  | 13d | 2025-11-05 A | 2025-11-23 A | 100% |  | 2025-11-05 | 2025-12-05 | 23d |  |  | 33.67h | 33.67h | 1,049.88 | 546 | 1,049.88 |
| 73 | 1.7.1 | A-051 Registro de incidencias | manual | 13d | 2025-11-06 A | 2025-11-23 A | 100% |  | 2025-11-06 | 2025-12-05 | 22d |  | Desarrollo [1%] | 4.18h | 4.18h | 125.4 | 45 | 125.4 |
| 74 | 1.7.2 | A-052 Registro de decisiones | manual | 13d | 2025-11-06 A | 2025-11-23 A | 100% |  | 2025-11-06 | 2025-12-05 | 22d |  | Desarrollo [1%] | 4.18h | 4.18h | 125.4 | 105 | 125.4 |
| 75 | 1.7.3 | A-053 Registro de cambios | manual | 13d | 2025-11-06 A | 2025-11-23 A | 100% |  | 2025-11-06 | 2025-12-05 | 22d |  | Desarrollo [1%] | 4.18h | 4.18h | 125.4 | 45 | 125.4 |
| 76 | 1.7.4 | A-054 Informes de Seguimiento del Cronograma | manual | 13d | 2025-11-06 A | 2025-11-23 A | 100% |  | 2025-11-06 | 2025-12-05 | 22d |  | Desarrollo [1%] | 4.18h | 4.18h | 125.4 | 69 | 125.4 |
| 77 | 1.7.5 | A-055 Informes de Seguimiento de Costes | manual | 13d | 2025-11-06 A | 2025-11-23 A | 100% |  | 2025-11-06 | 2025-12-05 | 22d |  | Desarrollo [1%] | 4.18h | 4.18h | 125.4 | 36 | 125.4 |
| 78 | 1.7.6 | A-056 Informes de Desempeño del equipo de trabajo | manual | 13d | 2025-11-06 A | 2025-11-23 A | 100% |  | 2025-11-06 | 2025-12-05 | 22d |  | Desarrollo [1%] | 4.82h | 4.82h | 144.65 | 36 | 144.65 |
| 79 | 1.7.7 | A-057 Sprint backlog | manual | 14d | 2025-11-05 A | 2025-11-23 A | 100% |  | 2025-11-05 | 2025-11-17 | 9d |  | Jefe Desarrollo [1%] | 3.77h | 3.77h | 131.93 | 105 | 131.93 |
| 80 | 1.7.8 | A-058 Kanban de seguimiento | manual | 13d | 2025-11-06 A | 2025-11-23 A | 100% |  | 2025-11-06 | 2025-12-05 | 22d |  | Jefe Desarrollo [1%] | 4.18h | 4.18h | 146.3 | 105 | 146.3 |
| 81 | 1.8 | **Pruebas Funcionales** |  | 10d | 2025-11-17 A | 2025-11-28 | 48% | 5.19d | 2025-11-17 | 2025-11-28 | 10d | 0d |  | 31.68h | 10.02h | 1,013.91 | 1,440 | 320.63 |
| 82 | 1.8.1 | A-059 Pruebas de acceso y cuentas | manual | 2d | 2025-11-17 A | 2025-11-18 A | 100% |  | 2025-11-17 | 2025-11-20 | 4d |  | Tester [7%] | 3.02h | 3.02h | 96.63 | 208 | 96.63 |
| 83 | 1.8.2 | A-060 Pruebas del catálogo y buscador | manual | 4d | 2025-11-17 | 2025-11-20 |  |  | 2025-11-17 | 2025-11-20 | 4d |  | Tester | 6.5h |  | 208 | 208 |  |
| 84 | 1.8.3 | A-061 Pruebas de carrito y proceso de compra | manual | 1d | 2025-11-23 A | 2025-11-23 A | 100% |  | 2025-11-17 | 2025-11-20 | 4d |  | Tester [15%] | 1.5h | 1.5h | 48 | 208 | 48 |
| 85 | 1.8.4 | A-062 Pruebas de pedidos y seguimiento | manual | 1d | 2025-11-23 A | 2025-11-23 A | 100% |  | 2025-11-20 | 2025-11-25 | 4d |  | Tester [15%] | 1.5h | 1.5h | 48 | 208 | 48 |
| 86 | 1.8.5 | A-063 Pruebas de funcionalidades de administración | manual | 1d | 2025-11-22 A | 2025-11-22 A | 100% |  | 2025-11-20 | 2025-11-25 | 4d |  | Tester [20%] | 2h | 2h | 64 | 208 | 64 |
| 87 | 1.8.6 | A-080 Cobertura de las pruebas | manual | 3d | 2025-11-23 A | 2025-11-25 | 58% | 1.27d | 2025-11-25 | 2025-11-27 | 3d |  | Tester [50%] | 15.06h | 2h | 482.08 | 332.8 | 64 |
| 88 | 1.8.7 | A-086 Sugerencias de mejora y pruebas extra | manual | 2d | 2025-11-27 | 2025-11-28 |  |  | 2025-11-27 | 2025-11-28 | 2d |  | Tester | 2.1h |  | 67.2 | 67.2 |  |

| ID | WBS | Task | Type | Duration | Start | Finish | Complete | Remaining | Baseline start | Baseline finish | Baseline duration | Total slack | Resources | Work | Actual work | Cost | Baseline cost | Actual cost |
| --- | --- | --- | --- | --- | --- | --- | --- | --- | --- | --- | --- | --- | --- | --- | --- | --- | --- | --- |
| 89 | 1.9 | **Corrección de errores** |  | 15d | 2025-11-17 A | 2025-12-05 | 13% | 13.04d | 2025-11-17 | 2025-12-05 | 15d | 0d |  | 118.3h | 20h | 3,549 | 909 | 600 |
| 90 | 1.9.1 | A-064 Corrección técnica de errores | manual | 4d | 2025-11-19 A | 2025-11-24 | 75% | 1d | 2025-11-17 | 2025-11-20 | 4d |  | Desarrollo [1%] | 100h | 20h | 3,000 | 360 | 600 |
| 91 | 1.9.2 | A-065 Pruebas de verificación de correcto funcionamiento | manual | 4d | 2025-11-17 | 2025-11-20 |  |  | 2025-11-17 | 2025-11-20 | 4d |  | Desarrollo [200%] | 7.9h |  | 237 | 237 |  |
| 92 | 1.9.3 | A-081 Cantidad de errores detectados | manual | 15d | 2025-11-17 | 2025-12-05 |  |  | 2025-11-17 | 2025-12-05 | 15d |  | Desarrollo [50%] | 10.4h |  | 312 | 312 |  |
| 93 | 1.10 | **Despliegue** |  | 1d | 2025-11-21 A | 2025-11-23 A | 100% |  | 2025-11-17 | 2025-12-05 | 15d |  |  | 6.63h | 6.63h | 202.56 | 146.17 | 202.56 |
| 94 | 1.10.1 | A-066 Configuración de la solución en el PaaS | manual | 1.43d | 2025-11-21 A | 2025-11-22 A | 100% |  | 2025-11-17 | 2025-11-18 | 1.3d |  | Desarrollo [12%]; Tester [7%] | 5.1h | 5.1h | 155.04 | 71.42 | 155.04 |
| 95 | 1.10.2 | A-067 Ejecución del despliegue | manual | 2d | 2025-11-22 A | 2025-11-23 A | 100% |  | 2025-12-05 | 2025-12-05 | 1d |  | Desarrollo [2%]; Jefe Desarrollo [1%] | 1.53h | 1.53h | 47.52 | 74.75 | 47.52 |
| 96 | 1.11 | **Cierre del Proyecto** |  | 4.3d | 2025-12-05 | 2025-12-11 |  |  | 2025-12-05 | 2025-12-11 | 4.3d | 0d |  | 8.7h |  | 321.9 | 321.9 |  |
| 97 | 1.11.1 | A-068 Informe de cierre | manual | 1d | 2025-12-05 | 2025-12-05 |  |  | 2025-12-05 | 2025-12-05 | 1d |  | Equipo Director [50%] | 2.5h |  | 92.5 | 92.5 |  |
| 98 | 1.11.2 | A-069 Presentación | manual | 1.3d | 2025-12-10 | 2025-12-11 |  |  | 2025-12-10 | 2025-12-11 | 1.3d |  | Equipo Director [250%] | 6.2h |  | 229.4 | 229.4 |  |
